# Cronograma Site Adoção Pets

Schedule from MS Project, 2020-05-20 to 2020-07-14, status date 2020-07-14, costs in R$, A marks actual dates.

## Calendars

- Padrão: Mon-Fri 09:00-12:00, 13:00-18:00; Sat-Sun off.

## Resources

| Resource | Rate |
| --- | --- |
| Carlos | 200 |
| Wallan | 200 |
| Luis Eduardo | 200 |

## Schedule

| ID | WBS | Task | Duration | Start | Finish | Predecessors | Complete | Remaining | Baseline start | Baseline finish | Baseline duration | Resources | Work | Actual work | Cost | Baseline cost | Actual cost |
| --- | --- | --- | --- | --- | --- | --- | --- | --- | --- | --- | --- | --- | --- | --- | --- | --- | --- |
| 1 | 1 | **Projeto Site Adoção de animais doméstico** | 40d? | 2020-05-20 09:00 A | 2020-07-14 18:00 |  | 66% | 13.68d? | 2020-05-20 09:00 | 2020-07-02 16:00 | 31.75d? |  | 231h | 152h | 46,200 | 44,200 | 30,400 |
| 2 | 1.1 | **Prospecção** | 1.12d? | 2020-05-20 09:00 A | 2020-05-21 10:00 A |  | 100% |  | 2020-05-20 09:00 | 2020-05-21 10:00 | 1.12d? |  | 9h | 9h | 1,800 | 1,800 | 1,800 |
| 3 | 1.1.1 | **PTEC** | 0.62d? | 2020-05-20 09:00 A | 2020-05-20 15:00 A |  | 100% |  | 2020-05-20 09:00 | 2020-05-20 15:00 | 0.62d? |  | 5h | 5h | 1,000 | 1,000 | 1,000 |
| 4 | 1.1.1.1 | Estudar domínio de aplicação | 0.12d | 2020-05-20 09:00 A | 2020-05-20 10:00 A |  | 100% |  | 2020-05-20 09:00 | 2020-05-20 10:00 | 0.12d | Carlos | 1h | 1h | 200 | 200 | 200 |
| 5 | 1.1.1.2 | Reunir-se com fornecedor de requisítos | 0.12d | 2020-05-20 10:00 A | 2020-05-20 11:00 A | 4 | 100% |  | 2020-05-20 10:00 | 2020-05-20 11:00 | 0.12d | Carlos | 1h | 1h | 200 | 200 | 200 |
| 6 | 1.1.1.3 | Redigir proposta técnica | 0.12d | 2020-05-20 11:00 A | 2020-05-20 12:00 A | 5 | 100% |  | 2020-05-20 11:00 | 2020-05-20 12:00 | 0.12d | Wallan | 1h | 1h | 200 | 200 | 200 |
| 7 | 1.1.1.4 | Revisar proposta técnica | 0.12d | 2020-05-20 13:00 A | 2020-05-20 14:00 A | 6 | 100% |  | 2020-05-20 13:00 | 2020-05-20 14:00 | 0.12d | Wallan | 1h | 1h | 200 | 200 | 200 |
| 8 | 1.1.1.5 | Aprovar PTEC | 0.12d? | 2020-05-20 14:00 A | 2020-05-20 15:00 A | 7 | 100% |  | 2020-05-20 14:00 | 2020-05-20 15:00 | 0.12d? | Carlos | 1h | 1h | 200 | 200 | 200 |
| 9 | 1.1.2 | **Est. Prel. Tam.** | 0.25d | 2020-05-20 15:00 A | 2020-05-20 17:00 A |  | 100% |  | 2020-05-20 15:00 | 2020-05-20 17:00 | 0.25d |  | 2h | 2h | 400 | 400 | 400 |
| 10 | 1.1.2.1 | Estimar tamanho do projeto | 0.12d | 2020-05-20 15:00 A | 2020-05-20 16:00 A | 8 | 100% |  | 2020-05-20 15:00 | 2020-05-20 16:00 | 0.12d | Carlos | 1h | 1h | 200 | 200 | 200 |
| 11 | 1.1.2.2 | Revisar estimativa de tamanho do projeto | 0.12d | 2020-05-20 16:00 A | 2020-05-20 17:00 A | 10 | 100% |  | 2020-05-20 16:00 | 2020-05-20 17:00 | 0.12d | Carlos | 1h | 1h | 200 | 200 | 200 |
| 12 | 1.1.3 | **Est. Prel. Cronograma e Orçamento** | 0.25d | 2020-05-20 17:00 A | 2020-05-21 10:00 A |  | 100% |  | 2020-05-20 17:00 | 2020-05-21 10:00 | 0.25d |  | 2h | 2h | 400 | 400 | 400 |
| 13 | 1.1.3.1 | Elaborar cronograma e orçamento preliminares | 0.12d | 2020-05-20 17:00 A | 2020-05-20 18:00 A | 11 | 100% |  | 2020-05-20 17:00 | 2020-05-20 18:00 | 0.12d | Carlos | 1h | 1h | 200 | 200 | 200 |
| 14 | 1.1.3.2 | Revisar cronograma e orçamento preliminares | 0.12d | 2020-05-21 09:00 A | 2020-05-21 10:00 A | 13 | 100% |  | 2020-05-21 09:00 | 2020-05-21 10:00 | 0.12d | Carlos | 1h | 1h | 200 | 200 | 200 |
| 15 | 1.2 | **Análise** | 3.75d | 2020-05-20 15:00 A | 2020-05-26 12:00 A |  | 100% |  | 2020-05-20 15:00 | 2020-05-26 12:00 | 3.75d |  | 30h | 30h | 6,000 | 6,000 | 6,000 |
| 16 | 1.2.1 | **Documento de requisitos** | 1.88d | 2020-05-20 15:00 A | 2020-05-22 14:00 A |  | 100% |  | 2020-05-20 15:00 | 2020-05-22 14:00 | 1.88d |  | 15h | 15h | 3,000 | 3,000 | 3,000 |
| 17 | 1.2.1.1 | Elaborar o documento de requisitos | 1d | 2020-05-20 15:00 A | 2020-05-21 15:00 A | 8 | 100% |  | 2020-05-20 15:00 | 2020-05-21 15:00 | 1d | Wallan | 8h | 8h | 1,600 | 1,600 | 1,600 |
| 18 | 1.2.1.2 | Revisar docimento de requisitos | 0.62d | 2020-05-21 15:00 A | 2020-05-22 11:00 A | 17 | 100% |  | 2020-05-21 15:00 | 2020-05-22 11:00 | 0.62d | Wallan | 5h | 5h | 1,000 | 1,000 | 1,000 |
| 19 | 1.2.1.3 | Submeter DRE | 0.25d | 2020-05-22 11:00 A | 2020-05-22 14:00 A | 18 | 100% |  | 2020-05-22 11:00 | 2020-05-22 14:00 | 0.25d | Wallan | 2h | 2h | 400 | 400 | 400 |
| 20 | 1.2.2 | **MRB** | 1.88d | 2020-05-22 14:00 A | 2020-05-26 12:00 A |  | 100% |  | 2020-05-22 14:00 | 2020-05-26 12:00 | 1.88d |  | 15h | 15h | 3,000 | 3,000 | 3,000 |
| 21 | 1.2.2.1 | Elaborar MRB | 1.25d | 2020-05-22 14:00 A | 2020-05-25 16:00 A | 19 | 100% |  | 2020-05-22 14:00 | 2020-05-25 16:00 | 1.25d | Carlos | 10h | 10h | 2,000 | 2,000 | 2,000 |
| 22 | 1.2.2.2 | Revisar | 0.62d | 2020-05-25 16:00 A | 2020-05-26 12:00 A | 21 | 100% |  | 2020-05-25 16:00 | 2020-05-26 12:00 | 0.62d | Carlos | 5h | 5h | 1,000 | 1,000 | 1,000 |
| 23 | 1.3 | **Projeto** | 1.12d? | 2020-05-26 13:00 A | 2020-05-27 14:00 A |  | 100% |  | 2020-05-26 13:00 | 2020-05-27 14:00 | 1.12d? |  | 9h | 9h | 1,800 | 1,800 | 1,800 |
| 24 | 1.3.1 | **Diagrama de Classes** | 0.62d | 2020-05-26 13:00 A | 2020-05-26 18:00 A |  | 100% |  | 2020-05-26 13:00 | 2020-05-26 18:00 | 0.62d |  | 5h | 5h | 1,000 | 1,000 | 1,000 |
| 25 | 1.3.1.1 | Elaborar diagrama de classes | 0.25d | 2020-05-26 13:00 A | 2020-05-26 15:00 A | 22 | 100% |  | 2020-05-26 13:00 | 2020-05-26 15:00 | 0.25d | Luis Eduardo | 2h | 2h | 400 | 400 | 400 |
| 26 | 1.3.1.2 | Revisar diagrama de classes | 0.25d | 2020-05-26 15:00 A | 2020-05-26 17:00 A | 25 | 100% |  | 2020-05-26 15:00 | 2020-05-26 17:00 | 0.25d | Luis Eduardo | 2h | 2h | 400 | 400 | 400 |
| 27 | 1.3.1.3 | Atualizar MRB | 0.12d | 2020-05-26 17:00 A | 2020-05-26 18:00 A | 26 | 100% |  | 2020-05-26 17:00 | 2020-05-26 18:00 | 0.12d | Luis Eduardo | 1h | 1h | 200 | 200 | 200 |

| ID | WBS | Task | Duration | Start | Finish | Predecessors | Complete | Remaining | Baseline start | Baseline finish | Baseline duration | Total slack | Resources | Work | Actual work | Cost | Baseline cost | Actual cost |
| --- | --- | --- | --- | --- | --- | --- | --- | --- | --- | --- | --- | --- | --- | --- | --- | --- | --- | --- |
| 28 | 1.3.2 | **Modelo Entidade Relacionamento** | 0.5d? | 2020-05-27 09:00 A | 2020-05-27 14:00 A |  | 100% |  | 2020-05-27 09:00 | 2020-05-27 14:00 | 0.5d? |  |  | 4h | 4h | 800 | 800 | 800 |
| 29 | 1.3.2.1 | Elaborar MER | 0.25d | 2020-05-27 09:00 A | 2020-05-27 11:00 A | 27 | 100% |  | 2020-05-27 09:00 | 2020-05-27 11:00 | 0.25d |  | Luis Eduardo | 2h | 2h | 400 | 400 | 400 |
| 30 | 1.3.2.2 | Revisar MER | 0.25d? | 2020-05-27 11:00 A | 2020-05-27 14:00 A | 29 | 100% |  | 2020-05-27 11:00 | 2020-05-27 14:00 | 0.25d? |  | Luis Eduardo | 2h | 2h | 400 | 400 | 400 |
| 31 | 1.4 | **Planejamento** | 1.88d | 2020-05-27 14:00 A | 2020-05-29 12:00 A |  | 100% |  | 2020-05-27 14:00 | 2020-05-29 12:00 | 1.88d |  |  | 15h | 15h | 3,000 | 3,000 | 3,000 |
| 32 | 1.4.1 | Divisão dos times de desenvolvimento | 0.25d | 2020-05-27 14:00 A | 2020-05-27 16:00 A | 30 | 100% |  | 2020-05-27 14:00 | 2020-05-27 16:00 | 0.25d |  | Carlos | 2h | 2h | 400 | 400 | 400 |
| 33 | 1.4.2 | Definir linguagem/frameworks a serem utilizados | 0.25d | 2020-05-27 16:00 A | 2020-05-27 18:00 A | 32 | 100% |  | 2020-05-27 16:00 | 2020-05-27 18:00 | 0.25d |  | Wallan | 2h | 2h | 400 | 400 | 400 |
| 34 | 1.4.3 | **Definir padrão de interface e usabilidade** | 0.5d | 2020-05-28 09:00 A | 2020-05-28 14:00 A |  | 100% |  | 2020-05-28 09:00 | 2020-05-28 14:00 | 0.5d |  |  | 4h | 4h | 800 | 800 | 800 |
| 35 | 1.4.3.1 | Montar Mockup de interface | 0.25d | 2020-05-28 09:00 A | 2020-05-28 11:00 A | 33 | 100% |  | 2020-05-28 09:00 | 2020-05-28 11:00 | 0.25d |  | Luis Eduardo | 2h | 2h | 400 | 400 | 400 |
| 36 | 1.4.3.2 | Aprovar Interface | 0.25d | 2020-05-28 11:00 A | 2020-05-28 14:00 A | 35 | 100% |  | 2020-05-28 11:00 | 2020-05-28 14:00 | 0.25d |  | Luis Eduardo | 2h | 2h | 400 | 400 | 400 |
| 37 | 1.4.4 | **Iniciar repositório para controle de versionamento** | 0.88d | 2020-05-28 14:00 A | 2020-05-29 12:00 A |  | 100% |  | 2020-05-28 14:00 | 2020-05-29 12:00 | 0.88d |  |  | 7h | 7h | 1,400 | 1,400 | 1,400 |
| 38 | 1.4.4.1 | Divisão das equipes de desenvolvimento | 0.38d | 2020-05-28 14:00 A | 2020-05-28 17:00 A | 36 | 100% |  | 2020-05-28 14:00 | 2020-05-28 17:00 | 0.38d |  | Carlos | 3h | 3h | 600 | 600 | 600 |
| 39 | 1.4.4.2 | Definir linguagem/frameworks a serem utilizados | 0.5d | 2020-05-28 17:00 A | 2020-05-29 12:00 A | 38 | 100% |  | 2020-05-28 17:00 | 2020-05-29 12:00 | 0.5d |  | Carlos | 4h | 4h | 800 | 800 | 800 |
| 40 | 1.5 | **Implementação** | 18d | 2020-05-29 13:00 A | 2020-06-24 12:00 |  | 62% | 6.88d | 2020-05-29 13:00 | 2020-06-24 10:00 | 17.75d | 11.62d |  | 144h | 89h | 28,800 | 26,800 | 17,800 |
| 41 | 1.5.1 | **Realese 01** | 5.38d | 2020-05-29 13:00 A | 2020-06-05 16:00 A |  | 100% |  | 2020-06-02 17:00 | 2020-06-24 10:00 | 15.25d |  |  | 43h | 43h | 8,600 | 22,800 | 8,600 |
| 42 | 1.5.1.1 | Implementar [RFS01] | 0.62d | 2020-05-29 13:00 A | 2020-05-29 18:00 A | 39 | 100% |  | 2020-06-02 17:00 | 2020-06-03 14:00 | 0.62d |  | Carlos | 5h | 5h | 1,000 | 1,000 | 1,000 |
| 43 | 1.5.1.2 | Implementar [RFS02] | 0.62d | 2020-06-01 09:00 A | 2020-06-01 15:00 A | 42 | 100% |  | 2020-06-03 14:00 | 2020-06-04 10:00 | 0.62d |  | Carlos | 5h | 5h | 1,000 | 1,000 | 1,000 |
| 44 | 1.5.1.3 | Implementar [RFS03] | 0.62d | 2020-06-01 15:00 A | 2020-06-02 11:00 A | 43 | 100% |  | 2020-06-04 10:00 | 2020-06-04 16:00 | 0.62d |  | Carlos | 5h | 5h | 1,000 | 1,000 | 1,000 |
| 45 | 1.5.1.4 | Implementar [RFS04] | 0.62d | 2020-06-02 11:00 A | 2020-06-02 17:00 A | 44 | 100% |  | 2020-06-04 16:00 | 2020-06-05 12:00 | 0.62d |  | Carlos | 5h | 5h | 1,000 | 1,000 | 1,000 |
| 46 | 1.5.1.5 | Implementar [RFS05] | 0.62d | 2020-06-02 17:00 A | 2020-06-03 14:00 A | 45 | 100% |  | 2020-06-05 13:00 | 2020-06-05 18:00 | 0.62d |  | Carlos | 5h | 5h | 1,000 | 1,000 | 1,000 |
| 47 | 1.5.1.6 | Implementar [RFS06] | 0.62d | 2020-06-03 14:00 A | 2020-06-04 10:00 A | 46 | 100% |  | 2020-06-08 09:00 | 2020-06-08 15:00 | 0.62d |  | Carlos | 5h | 5h | 1,000 | 1,000 | 1,000 |
| 48 | 1.5.1.7 | Implementar [RFS07] | 0.62d | 2020-06-04 10:00 A | 2020-06-04 16:00 A | 47 | 100% |  | 2020-06-08 15:00 | 2020-06-09 11:00 | 0.62d |  | Carlos | 5h | 5h | 1,000 | 1,000 | 1,000 |
| 49 | 1.5.1.8 | Implementar [RFS08] | 1d | 2020-06-04 16:00 A | 2020-06-05 16:00 A | 48 | 100% |  | 2020-06-09 11:00 | 2020-06-10 11:00 | 1d |  | Carlos | 8h | 8h | 1,600 |  | 1,600 |
| 50 | 1.5.2 | **Realese 02** | 5.75d | 2020-06-05 16:00 A | 2020-06-15 14:00 A |  | 100% |  | 2020-06-10 11:00 | 2020-06-24 10:00 | 9.88d |  |  | 46h | 46h | 9,200 | 15,800 | 9,200 |
| 51 | 1.5.2.1 | Implementar [RFS09] | 0.62d | 2020-06-05 16:00 A | 2020-06-08 12:00 A | 49 | 100% |  | 2020-06-10 11:00 | 2020-06-10 17:00 | 0.62d |  | Wallan | 5h | 5h | 1,000 | 1,000 | 1,000 |
| 52 | 1.5.2.2 | Implementar [RFS10] | 0.62d | 2020-06-08 13:00 A | 2020-06-08 18:00 A | 51 | 100% |  | 2020-06-10 17:00 | 2020-06-11 14:00 | 0.62d |  | Wallan | 5h | 5h | 1,000 | 1,000 | 1,000 |
| 53 | 1.5.2.3 | Implementar [RFS11] | 0.62d | 2020-06-09 09:00 A | 2020-06-09 15:00 A | 52 | 100% |  | 2020-06-11 14:00 | 2020-06-12 10:00 | 0.62d |  | Wallan | 5h | 5h | 1,000 | 1,000 | 1,000 |
| 54 | 1.5.2.4 | Implementar [RFS12] | 0.62d | 2020-06-09 15:00 A | 2020-06-10 11:00 A | 53 | 100% |  | 2020-06-12 10:00 | 2020-06-12 16:00 | 0.62d |  | Wallan | 5h | 5h | 1,000 | 1,000 | 1,000 |
| 55 | 1.5.2.5 | Implementar [RFS13] | 0.62d | 2020-06-10 11:00 A | 2020-06-10 17:00 A | 54 | 100% |  | 2020-06-12 16:00 | 2020-06-15 12:00 | 0.62d |  | Wallan | 5h | 5h | 1,000 | 1,000 | 1,000 |
| 56 | 1.5.2.6 | Implementar [RFS14] | 0.62d | 2020-06-10 17:00 A | 2020-06-11 14:00 A | 55 | 100% |  | 2020-06-15 13:00 | 2020-06-15 18:00 | 0.62d |  | Wallan | 5h | 5h | 1,000 | 1,000 | 1,000 |
| 57 | 1.5.2.7 | Implementar [RFS16] | 1d | 2020-06-11 14:00 A | 2020-06-12 14:00 A | 56 | 100% |  |  |  |  |  | Wallan | 8h | 8h | 1,600 |  | 1,600 |
| 58 | 1.5.2.8 | Implementar [RFS15] | 1d | 2020-06-12 14:00 A | 2020-06-15 14:00 A | 57 | 100% |  |  |  |  |  | Wallan | 8h | 8h | 1,600 |  | 1,600 |

| ID | WBS | Task | Duration | Start | Finish | Predecessors | Baseline start | Baseline finish | Baseline duration | Total slack | Free slack | Resources | Work | Cost | Baseline cost |
| --- | --- | --- | --- | --- | --- | --- | --- | --- | --- | --- | --- | --- | --- | --- | --- |
| 59 | 1.5.3 | **Realese 03** | 6.88d | 2020-06-15 14:00 | 2020-06-24 12:00 |  | 2020-06-16 09:00 | 2020-06-24 10:00 | 6.12d | 11.62d |  |  | 55h | 11,000 | 9,800 |
| 60 | 1.5.3.1 | Implementar [RFS17] | 0.62d | 2020-06-15 14:00 | 2020-06-16 10:00 | 58 | 2020-06-17 11:00 | 2020-06-17 17:00 | 0.62d | 13.62d | 0d | Luis Eduardo | 5h | 1,000 | 1,000 |
| 61 | 1.5.3.2 | Implementar [RFS18] | 0.62d | 2020-06-16 10:00 | 2020-06-16 16:00 | 60 | 2020-06-17 17:00 | 2020-06-18 14:00 | 0.62d | 13.62d | 0d | Luis Eduardo | 5h | 1,000 | 1,000 |
| 62 | 1.5.3.3 | Implementar [RFS19] | 0.62d | 2020-06-16 16:00 | 2020-06-17 12:00 | 61 | 2020-06-18 14:00 | 2020-06-19 10:00 | 0.62d | 13.62d | 0d | Luis Eduardo | 5h | 1,000 | 1,000 |
| 63 | 1.5.3.4 | Implementar [RFS20] | 1d | 2020-06-17 13:00 | 2020-06-18 12:00 | 62 | 2020-06-19 10:00 | 2020-06-22 10:00 | 1d | 11.62d | 0d | Luis Eduardo | 8h | 1,600 | 1,600 |
| 64 | 1.5.3.5 | Implementar [RFS21] | 1d | 2020-06-18 13:00 | 2020-06-19 12:00 | 63 | 2020-06-22 10:00 | 2020-06-23 10:00 | 1d | 11.62d | 0d | Luis Eduardo | 8h | 1,600 | 1,600 |
| 65 | 1.5.3.6 | Implementar [RFS22] | 1d | 2020-06-19 13:00 | 2020-06-22 12:00 | 64 | 2020-06-23 10:00 | 2020-06-24 10:00 | 1d | 11.62d | 0d | Luis Eduardo | 8h | 1,600 | 1,600 |
| 66 | 1.5.3.7 | Implementar [RFS23] | 1d | 2020-06-22 13:00 | 2020-06-23 12:00 | 65 |  |  |  | 11.62d | 0d | Luis Eduardo | 8h | 1,600 |  |
| 67 | 1.5.3.8 | Implementar [RFS24] | 1d | 2020-06-23 13:00 | 2020-06-24 12:00 | 66 |  |  |  | 11.62d | 0d | Luis Eduardo | 8h | 1,600 |  |
| 68 | 1.6 | Monitoramento e controle | 1d | 2020-06-24 13:00 | 2020-06-25 12:00 | 67 | 2020-06-24 10:00 | 2020-06-25 10:00 | 1d | 11.62d | 0d | Wallan | 8h | 1,600 | 1,600 |
| 69 | 1.7 | Fechamento | 1d | 2020-06-25 13:00 | 2020-06-26 12:00 | 68 | 2020-06-25 10:00 | 2020-06-26 10:00 | 1d | 11.62d | 0d | Carlos | 8h | 1,600 | 1,600 |
| 70 | 1.8 | Controle de mudanças | 1d | 2020-06-26 13:00 | 2020-06-29 12:00 | 69 | 2020-06-26 10:00 | 2020-06-29 10:00 | 1d | 11.62d |  | Carlos | 8h | 1,600 | 1,600 |
